# Piano - Struttura edificio (c.a. + acciaio)

Schedule from MS Project XML, 2026-02-02 to 2026-11-06.

## Calendars

- Standard[Imported]: Mon-Fri 08:00-12:00, 13:00-17:00; Sat-Sun off.

## Resources

| Resource |
| --- |
| Unassigned |

## Schedule

| ID | WBS | Task | Duration | Start | Finish | Predecessors | Complete |
| --- | --- | --- | --- | --- | --- | --- | --- |
| 1 | FON-CEM | Fondazioni | 45d | 2026-02-02 | 2026-04-03 |  | 100% |
| 2 | INT-CEM | Livello interrato | 15d | 2026-04-06 | 2026-04-24 | 1 | 100% |
| 3 | ASC | **Nucleo ascensori** | 80d | 2026-04-27 | 2026-08-14 |  | 59% |
| 4 | ASC-CEM | Nucleo Low | 45d | 2026-04-27 | 2026-06-26 | 2 | 100% |
| 5 | ASC-CEM | Nucleo Med | 45d | 2026-05-15 | 2026-07-16 | 2FS+14d | 60% |
| 6 | ASC-CEM | Nucleo High | 45d | 2026-06-04 | 2026-08-05 | 2FS+28d | 25% |
| 7 | VER-ACC | Struttura verticale acciaio | 7d | 2026-08-06 | 2026-08-14 | 6 | 10% |
| 8 | ORI | **Livelli L1–L5** | 60d | 2026-08-17 | 2026-11-06 |  |  |
| 9 | ORI | **L1** | 12d | 2026-08-17 | 2026-09-01 | 7 |  |
| 10 | ORI-ACC | L1 - Acciaio | 5d | 2026-08-17 | 2026-08-21 |  |  |
| 11 | ORI-CEM | L1 - Soletta | 7d | 2026-08-24 | 2026-09-01 | 10 |  |
| 12 | ORI | **L2** | 12d | 2026-09-02 | 2026-09-17 | 11 |  |
| 13 | ORI-ACC | L2 - Acciaio | 5d | 2026-09-02 | 2026-09-08 |  |  |
| 14 | ORI-CEM | L2 - Soletta | 7d | 2026-09-09 | 2026-09-17 | 13 |  |
| 15 | ORI | **L3** | 12d | 2026-09-18 | 2026-10-05 | 14 |  |
| 16 | ORI-ACC | L3 - Acciaio | 5d | 2026-09-18 | 2026-09-24 |  |  |
| 17 | ORI-CEM | L3 - Soletta | 7d | 2026-09-25 | 2026-10-05 | 16 |  |
| 18 | ORI | **L4** | 12d | 2026-10-06 | 2026-10-21 | 17 |  |
| 19 | ORI-ACC | L4 - Acciaio | 5d | 2026-10-06 | 2026-10-12 |  |  |
| 20 | ORI-CEM | L4 - Soletta | 7d | 2026-10-13 | 2026-10-21 | 19 |  |
| 21 | ORI | **L5** | 12d | 2026-10-22 | 2026-11-06 | 20 |  |
| 22 | ORI-ACC | L5 - Acciaio | 5d | 2026-10-22 | 2026-10-28 |  |  |
| 23 | ORI-CEM | L5 - Soletta | 7d | 2026-10-29 | 2026-11-06 | 22 |  |

Notes:
- 1: Fondazioni in calcestruzzo armato (c.a.).
- 2: Livello parcheggio sotto terra: elementi strutturali in calcestruzzo armato (c.a.).
- 8: Pacchetto livelli fuori terra dal L1 al L5: struttura in acciaio + soletta in c.a. su travi in acciaio.
- 9: Livello L1: colonne/travi in acciaio per deck + soletta in calcestruzzo armato su travi in acciaio.
- 10: Struttura in acciaio al L1: colonne in acciaio e travi per deck.
- 11: Soletta in calcestruzzo armato su travi in acciaio al L1.
- 12: Livello L2: colonne/travi in acciaio per deck + soletta in calcestruzzo armato su travi in acciaio.
- 13: Struttura in acciaio al L2: colonne in acciaio e travi per deck.
- 14: Soletta in calcestruzzo armato su travi in acciaio al L2.
- 15: Livello L3: colonne/travi in acciaio per deck + soletta in calcestruzzo armato su travi in acciaio.
- 16: Struttura in acciaio al L3: colonne in acciaio e travi per deck.
- 17: Soletta in calcestruzzo armato su travi in acciaio al L3.
- 18: Livello L4: colonne/travi in acciaio per deck + soletta in calcestruzzo armato su travi in acciaio.
- 19: Struttura in acciaio al L4: colonne in acciaio e travi per deck.
- 20: Soletta in calcestruzzo armato su travi in acciaio al L4.
- 21: Livello L5: colonne/travi in acciaio per deck + soletta in calcestruzzo armato su travi in acciaio.
- 22: Struttura in acciaio al L5: colonne in acciaio e travi per deck.
- 23: Soletta in calcestruzzo armato su travi in acciaio al L5.
